# 3.4线上看病估算持续时间

How a schedule from MS Project changed from version to version. A marks actual dates.

## Version 1 (saved 2020-04-09)

Note of the change: wx

| ID | WBS | Task | Duration | Start | Finish | Predecessors | Total float | Constraint |
| --- | --- | --- | --- | --- | --- | --- | --- | --- |
| 1 | 1 | **启动** | 7d | 2020-03-02 | 2020-03-10 |  | 0d |  |
| 2 |  | 组建核心团队 | 2d | 2020-03-02 | 2020-03-03 |  | 3d |  |
| 3 |  | 干系人利益 | 1d | 2020-03-04 | 2020-03-04 |  | 2d | start no earlier than 2020-03-04 |
| 4 |  | 里程碑计划 | 1d | 2020-03-05 | 2020-03-05 |  | 1d | start no earlier than 2020-03-05 |
| 5 |  | 制定项目章程 | 1d | 2020-03-09 | 2020-03-09 | 2, 3, 4 | 0d | as late as possible |
| 6 |  | 项目启动大会 | 1d | 2020-03-10 | 2020-03-10 | 5 | 0d | as late as possible |
| 7 | 2 | **规划** | 48d? | 2020-03-11 | 2020-05-14 |  | 0d |  |
| 8 | 2.1 | **规划范围** | 36d | 2020-03-11 | 2020-04-29 |  | 0d |  |
| 9 |  | 制定需求说明书 | 2d | 2020-03-11 | 2020-03-12 | 6 | 0d | as late as possible |
| 10 |  | 界面设计 | 4d | 2020-03-13 | 2020-03-18 | 9 | 0d | as late as possible |
| 11 |  | 详细设计说明书 | 4d | 2020-03-13 | 2020-03-18 | 9 | 0d | as late as possible |
| 12 |  | 范围说明书 | 3d | 2020-03-16 | 2020-03-18 | 9 | 0d | as late as possible |
| 13 |  | 创建WBS | 1d | 2020-03-19 | 2020-03-19 | 10, 11, 12 | 0d | start no later than 2020-03-19 |
| 14 |  | 形成范围基准 | 1d | 2020-04-29 | 2020-04-29 | 13 | 0d | as late as possible |
| 15 | 2.2 | **规划时间** | 5d | 2020-04-30 | 2020-05-06 |  | 0d |  |
| 16 |  | 排列工作包顺序 | 1d | 2020-04-30 | 2020-04-30 | 14 | 0d | as late as possible |
| 17 |  | 估算资源 | 1d | 2020-05-01 | 2020-05-01 | 16 | 0d | as late as possible |
| 18 |  | 估算持续时间 | 1d | 2020-05-04 | 2020-05-04 | 17 | 0d | as late as possible |
| 19 |  | 制定进度计划 | 1d | 2020-05-05 | 2020-05-05 | 18 | 0d | as late as possible |
| 20 |  | 形成进度基准 | 1d | 2020-05-06 | 2020-05-06 | 19 | 0d | as late as possible |
| 21 | 2.3 | **规划成本** | 3d | 2020-05-07 | 2020-05-10 |  | 0d |  |
| 22 |  | 项目成本估算 | 1d | 2020-05-07 | 2020-05-07 | 20 | 0d | as late as possible |
| 23 |  | 项目预算 | 1d | 2020-05-08 | 2020-05-08 | 22 | 0d | as late as possible |
| 24 |  | 形成范围基准 | 1d | 2020-05-10 | 2020-05-10 | 23 | 0d | as late as possible |
| 25 | 2.4 | **规划质量** | 3d | 2020-05-07 | 2020-05-10 |  | 0d |  |
| 26 |  | 制定测试计划 | 1d | 2020-05-07 | 2020-05-07 | 14 | 0d | as late as possible |
| 27 |  | 制定测试用例 | 2d | 2020-05-08 | 2020-05-10 | 26 | 0d | as late as possible |
| 28 | 2.5 | **规划人力资源** | 6d? | 2020-05-04 | 2020-05-10 |  | 0d |  |
| 29 |  | 制定人力资源计划 | 1d? | 2020-05-04 | 2020-05-04 | 17 | 4d | start no later than 2020-06-30 |
| 30 |  | 制定人员分配管理计划 | 1d? | 2020-05-10 | 2020-05-10 | 29 | 0d | as late as possible |
| 31 | 2.6 | **规划沟通** | 1d? | 2020-05-10 | 2020-05-10 |  |  |  |
| 32 |  | 制定沟通管理计划 | 1d? | 2020-05-10 | 2020-05-10 |  | 0d | as late as possible |
| 33 | 2.7 | **规划采购** | 2d | 2020-05-10 | 2020-05-11 |  |  |  |
| 34 |  | 自制外购分析 | 1d? | 2020-05-10 | 2020-05-10 | 17 | 0d | as late as possible |
| 35 |  | 制定采购文件 | 1d? | 2020-05-11 | 2020-05-11 | 34 | 0d | as late as possible |
| 36 | 2.8 | **规划风险** | 3d? | 2020-05-11 | 2020-05-13 |  | 0d |  |
| 37 |  | 识别风险 | 1d? | 2020-05-11 | 2020-05-11 | 15, 21, 25, 28 | 0d | as late as possible |
| 38 |  | 风险分析 | 1d? | 2020-05-12 | 2020-05-12 | 37 | 0d | as late as possible |
| 39 |  | 制定风险登记册 | 1d? | 2020-05-13 | 2020-05-13 | 38 | 0d | as late as possible |
| 40 |  | 规划整合 | 1d? | 2020-05-14 | 2020-05-14 | 39 | 0d | as late as possible |
| 41 | 3 | **执行与监控** | 58d? | 2020-05-15 | 2020-08-04 |  | 0d |  |
| 42 |  | 组建项目团队 | 1d? | 2020-05-15 | 2020-05-15 | 7 | 0d | as late as possible |
| 43 | 3.2 | **项目执行** | 45d | 2020-05-18 | 2020-07-17 |  | 0d |  |
| 44 | 3.2.1 | **病人模块** | 45d | 2020-05-18 | 2020-07-17 |  | 0d |  |
| 45 |  | 注册登录 | 5d | 2020-05-18 | 2020-05-22 | 42 | 0d | finish no earlier than 2020-04-16 |
| 46 |  | 首页 | 6d | 2020-05-25 | 2020-06-01 | 45 | 0d | finish no earlier than 2020-04-24 |
| 47 |  | 预约医生看病 | 9d | 2020-06-02 | 2020-06-12 | 46 | 0d | finish no earlier than 2020-06-09 |
| 48 |  | 买药 | 5d | 2020-06-24 | 2020-06-30 | 47 | -2d | start no earlier than 2020-05-11 |
| 49 |  | 搜索 | 5d | 2020-07-02 | 2020-07-08 | 48 | -2d | start no earlier than 2020-05-19 |
| 50 |  | 个人中心 | 10d | 2020-07-06 | 2020-07-17 | 49 |  | start no earlier than 2020-05-28 |
| 51 | 3.2.2 | **医生模块** | 25d | 2020-05-18 | 2020-06-19 |  | 21d |  |
| 52 |  | 注册登录 | 5d | 2020-05-18 | 2020-05-22 | 42 | 29d | start no earlier than 2020-05-13 |
| 53 |  | 首页 | 6d | 2020-05-25 | 2020-06-01 | 52 | 29d | start no earlier than 2020-05-20 |
| 54 |  | 个人信息 | 6d | 2020-06-02 | 2020-06-09 | 53 | 29d | start no earlier than 2020-05-28 |
| 55 |  | 给病人看病 | 3d | 2020-06-08 | 2020-06-19 |  | 21d | start no earlier than 2020-06-08 |
| 56 | 3.2.3 | **管理员模块** | 15d | 2020-05-18 | 2020-06-05 |  | 31d |  |
| 57 |  | 审核医生 | 6d | 2020-05-18 | 2020-05-25 | 42 | 40d | start no earlier than 2020-05-13 |
| 58 |  | 更新医生，病人，药品等信息 | 6d | 2020-05-21 | 2020-05-28 | 42 | 37d | start no earlier than 2020-05-21 |
| 59 |  | 数据备份 | 6d | 2020-05-29 | 2020-06-05 | 42 | 31d | start no earlier than 2020-05-29 |
| 60 | 3.3 | **项目监控** | 4d | 2020-07-30 | 2020-08-04 |  | 0d |  |
| 61 |  | 各项指标监控 | 1d | 2020-07-30 | 2020-07-30 | 42 | 0d | as late as possible |
| 62 |  | 监控评审 | 1d | 2020-07-31 | 2020-07-31 | 61 |  | as late as possible |
| 63 |  | 变更评审 | 1d | 2020-08-04 | 2020-08-04 | 62 |  | as late as possible |
| 64 |  | 例会 | 1d | 2020-08-04 | 2020-08-04 | 42 | 0d | as late as possible |
| 65 | 3.4 | **管理干系人** | 1d | 2020-08-04 | 2020-08-04 |  | 0d |  |
| 66 |  | 发布项目信息 | 1d | 2020-08-04 | 2020-08-04 | 42 | 0d | as late as possible |
| 67 |  | 报告监控指标 | 1d | 2020-08-04 | 2020-08-04 | 42 | 0d | as late as possible |
| 68 |  | 干系人沟通 | 1d | 2020-08-04 | 2020-08-04 | 42 | 0d | as late as possible |
| 69 | 3.5 | **团队建设** | 40d | 2020-06-10 | 2020-08-04 |  | 0d |  |
| 70 |  | 培训 | 6d | 2020-06-10 | 2020-06-17 | 42 | 34d | finish no earlier than 2020-06-17 |

| ID | WBS | Task | Duration | Start | Finish | Predecessors | Total float | Constraint |
| --- | --- | --- | --- | --- | --- | --- | --- | --- |
| 71 |  | 娱乐活动 | 1d | 2020-06-18 | 2020-06-18 | 42 | 33d | start no earlier than 2020-06-18 |
| 72 |  | 沟通 | 1d | 2020-08-04 | 2020-08-04 | 42 | 0d | as late as possible |
| 73 |  | 采购 | 1d | 2020-08-04 | 2020-08-04 | 42 | 0d | as late as possible |
| 74 |  | 项目验收 | 1d | 2020-07-21 | 2020-07-21 | 43 | 0d | as late as possible |
| 75 | 4 | **收尾** | 10d | 2020-07-22 | 2020-08-04 |  | 0d |  |
| 76 |  | 项目终验 | 10d | 2020-07-22 | 2020-08-04 | 74 | 0d | as late as possible |

## Version 2 (saved 2020-04-26)

Note of the change: wx

Last finish stays 2020-08-04.

Changed:

| ID | Task | Other |
| --- | --- | --- |
| 1 | **启动** | resources none → 间接成本 [0.1%]; 储备资金 [0.1%] |
| 7 | **规划** | resources none → 储备资金 [0.1%]; 间接成本 [0.1%] |
| 41 | **执行与监控** | resources none → 储备资金 [0.1%]; 间接成本 [0.1%] |
| 75 | **收尾** | resources none → 储备资金 [0.1%]; 间接成本 [0.1%] |

## Version 3 (saved 2020-05-07)

Note of the change: wx

Last finish stays 2020-08-04.

Changed:

| ID | Task | Other |
| --- | --- | --- |
| 2 | 组建核心团队 | resources UI专家; 项目经理; 设计专家; 需求专家; 质量专家 → 李嘉铭; 刘博文; 刘永泰; 王旭; 郑文涛 |
| 3 | 干系人利益 | resources 项目经理 → 刘博文 |
| 4 | 里程碑计划 | resources 项目经理 → 刘博文 |
| 5 | 制定项目章程 | resources 项目经理 → 刘博文 |
| 6 | 项目启动大会 | resources UI专家; 项目经理; 需求专家; 质量专家 → 李嘉铭; 刘博文; 王旭; 郑文涛 |
| 9 | 制定需求说明书 | resources 需求专家 → 王旭 |
| 10 | 界面设计 | resources UI专家; aa [2%] → 李嘉铭; 王旭 [2%] |
| 11 | 详细设计说明书 | resources 设计专家 → 刘永泰 |
| 12 | 范围说明书 | resources 项目经理 → 刘博文 |
| 13 | 创建WBS | resources 项目经理 → 刘博文 |
| 14 | 形成范围基准 | resources 项目经理 → 刘博文 |
| 16 | 排列工作包顺序 | resources 项目经理 → 刘博文 |
| 17 | 估算资源 | resources 项目经理 → 刘博文 |
| 18 | 估算持续时间 | resources 项目经理 → 刘博文 |
| 19 | 制定进度计划 | resources 项目经理 → 刘博文 |
| 20 | 形成进度基准 | resources 项目经理 → 刘博文 |
| 22 | 项目成本估算 | resources 项目经理 → 刘博文 |
| 23 | 项目预算 | resources 项目经理 → 刘博文 |
| 24 | 形成范围基准 | resources 项目经理 → 刘博文 |
| 26 | 制定测试计划 | resources 质量专家 → 郑文涛 |
| 27 | 制定测试用例 | resources 质量专家 → 郑文涛 |
| 29 | 制定人力资源计划 | resources 人力专家 → 刘永泰 |
| 30 | 制定人员分配管理计划 | resources 人力专家 → 刘永泰 |
| 32 | 制定沟通管理计划 | resources 项目经理 → 刘博文 |
| 34 | 自制外购分析 | resources 采购专家 → 李嘉铭 |
| 35 | 制定采购文件 | resources 采购专家 → 李嘉铭 |
| 37 | 识别风险 | resources 项目经理 → 刘博文 |
| 38 | 风险分析 | resources 项目经理 → 刘博文 |
| 39 | 制定风险登记册 | resources 风险专家 → 刘博文 |
| 40 | 规划整合 | resources 项目经理 → 刘博文 |
| 45 | 注册登录 | resources 程序员1 → 郑文涛 |
| 46 | 首页 | resources 程序员1 → 郑文涛 |
| 47 | 预约医生看病 | resources 程序员1 → 郑文涛 |
| 48 | 买药 | resources 程序员1 → 郑文涛 |
| 49 | 搜索 | resources 程序员1 → 郑文涛 |
| 50 | 个人中心 | resources 程序员1 → 郑文涛 |
| 52 | 注册登录 | resources 程序员2 → 娄政浩 |
| 53 | 首页 | resources 程序员2 → 娄政浩 |
| 54 | 个人信息 | resources 程序员2 → 娄政浩 |
| 55 | 给病人看病 | resources 程序员2 → 娄政浩 |
| 57 | 审核医生 | resources 程序员3 → 娄政浩 |
| 58 | 更新医生，病人，药品等信息 | resources 程序员3 → 娄政浩 |
| 59 | 数据备份 | resources 程序员3 → 娄政浩 |
| 61 | 各项指标监控 | resources 测试员1 → 王旭 |
| 62 | 监控评审 | resources 质量专家 → 郑文涛 |
| 63 | 变更评审 | resources 质量专家 → 郑文涛 |
| 64 | 例会 | resources aa; UI专家; 测试员1; 程序员1; 程序员2; 程序员3; 设计专家; 项目经理; 需求专家; 质量专家 → 王旭; 李嘉铭; 郑文涛; 娄政浩; 刘永泰; 刘博文 |
| 66 | 发布项目信息 | resources 项目经理 → 刘博文 |
| 67 | 报告监控指标 | resources 项目经理 → 刘博文 |
| 68 | 干系人沟通 | resources 项目经理 → 刘博文 |
| 70 | 培训 | resources aa; UI专家; 测试员1; 程序员1; 程序员2; 程序员3; 设计专家; 项目经理; 需求专家; 质量专家 → 王旭; 李嘉铭; 郑文涛; 娄政浩; 刘永泰; 刘博文 |
| 71 | 娱乐活动 | resources aa; UI专家; 测试员1; 程序员1; 程序员2; 程序员3; 设计专家; 项目经理; 需求专家; 质量专家 → 王旭; 李嘉铭; 郑文涛; 娄政浩; 刘永泰; 刘博文 |
| 72 | 沟通 | resources aa; UI专家; 测试员1; 程序员1; 程序员2; 程序员3; 设计专家; 项目经理; 需求专家; 质量专家 → 王旭; 李嘉铭; 郑文涛; 娄政浩; 刘永泰; 刘博文 |
| 73 | 采购 | resources 项目经理 → 刘博文 |
| 74 | 项目验收 | resources aa; UI专家; 测试员1; 程序员1; 程序员2; 程序员3; 设计专家; 项目经理; 需求专家; 质量专家 → 王旭; 李嘉铭; 郑文涛; 娄政浩; 刘永泰; 刘博文 |
| 76 | 项目终验 | resources aa; UI专家; 程序员1; 程序员2; 程序员3; 设计专家; 项目经理; 需求专家 → 王旭; 李嘉铭; 郑文涛; 娄政浩; 刘永泰; 刘博文 |

## Version 4 (saved 2020-05-07)

Note of the change: wx

Last finish stays 2020-08-04.

Changed:

| ID | Task | Other |
| --- | --- | --- |
| 2 | 组建核心团队 | resources 李嘉铭; 刘博文; 刘永泰; 王旭; 郑文涛 → UI专家; 项目经理; 设计专家; 需求专家; 质量专家 |
| 3 | 干系人利益 | resources 刘博文 → 项目经理 |
| 4 | 里程碑计划 | resources 刘博文 → 项目经理 |
| 5 | 制定项目章程 | resources 刘博文 → 项目经理 |
| 6 | 项目启动大会 | resources 李嘉铭; 刘博文; 王旭; 郑文涛 → UI专家; 项目经理; 需求专家; 质量专家 |
| 9 | 制定需求说明书 | resources 王旭 → 需求专家 |
| 10 | 界面设计 | resources 李嘉铭; 王旭 [2%] → UI专家; aa [2%] |
| 11 | 详细设计说明书 | resources 刘永泰 → 设计专家 |
| 12 | 范围说明书 | resources 刘博文 → 项目经理 |
| 13 | 创建WBS | resources 刘博文 → 项目经理 |
| 14 | 形成范围基准 | resources 刘博文 → 项目经理 |
| 16 | 排列工作包顺序 | resources 刘博文 → 项目经理 |
| 17 | 估算资源 | resources 刘博文 → 项目经理 |
| 18 | 估算持续时间 | resources 刘博文 → 项目经理 |
| 19 | 制定进度计划 | resources 刘博文 → 项目经理 |
| 20 | 形成进度基准 | resources 刘博文 → 项目经理 |
| 22 | 项目成本估算 | resources 刘博文 → 项目经理 |
| 23 | 项目预算 | resources 刘博文 → 项目经理 |
| 24 | 形成范围基准 | resources 刘博文 → 项目经理 |
| 26 | 制定测试计划 | resources 郑文涛 → 质量专家 |
| 27 | 制定测试用例 | resources 郑文涛 → 质量专家 |
| 29 | 制定人力资源计划 | resources 刘永泰 → 人力专家 |
| 30 | 制定人员分配管理计划 | resources 刘永泰 → 人力专家 |
| 32 | 制定沟通管理计划 | resources 刘博文 → 项目经理 |
| 34 | 自制外购分析 | resources 李嘉铭 → 采购专家 |
| 35 | 制定采购文件 | resources 李嘉铭 → 采购专家 |
| 37 | 识别风险 | resources 刘博文 → 项目经理 |
| 38 | 风险分析 | resources 刘博文 → 项目经理 |
| 39 | 制定风险登记册 | resources 刘博文 → 风险专家 |
| 40 | 规划整合 | resources 刘博文 → 项目经理 |
| 45 | 注册登录 | resources 郑文涛 → 程序员1 |
| 46 | 首页 | resources 郑文涛 → 程序员1 |
| 47 | 预约医生看病 | resources 郑文涛 → 程序员1 |
| 48 | 买药 | resources 郑文涛 → 程序员1 |
| 49 | 搜索 | resources 郑文涛 → 程序员1 |
| 50 | 个人中心 | resources 郑文涛 → 程序员1 |
| 52 | 注册登录 | resources 娄政浩 → 程序员2 |
| 53 | 首页 | resources 娄政浩 → 程序员2 |
| 54 | 个人信息 | resources 娄政浩 → 程序员2 |
| 55 | 给病人看病 | resources 娄政浩 → 程序员2 |
| 57 | 审核医生 | resources 娄政浩 → 程序员3 |
| 58 | 更新医生，病人，药品等信息 | resources 娄政浩 → 程序员3 |
| 59 | 数据备份 | resources 娄政浩 → 程序员3 |
| 61 | 各项指标监控 | resources 王旭 → 测试员1 |
| 62 | 监控评审 | resources 郑文涛 → 质量专家 |
| 63 | 变更评审 | resources 郑文涛 → 质量专家 |
| 64 | 例会 | resources 王旭; 李嘉铭; 郑文涛; 娄政浩; 刘永泰; 刘博文 → aa; UI专家; 测试员1; 程序员1; 程序员2; 程序员3; 设计专家; 项目经理; 需求专家; 质量专家 |
| 66 | 发布项目信息 | resources 刘博文 → 项目经理 |
| 67 | 报告监控指标 | resources 刘博文 → 项目经理 |
| 68 | 干系人沟通 | resources 刘博文 → 项目经理 |
| 70 | 培训 | resources 王旭; 李嘉铭; 郑文涛; 娄政浩; 刘永泰; 刘博文 → aa; UI专家; 测试员1; 程序员1; 程序员2; 程序员3; 设计专家; 项目经理; 需求专家; 质量专家 |
| 71 | 娱乐活动 | resources 王旭; 李嘉铭; 郑文涛; 娄政浩; 刘永泰; 刘博文 → aa; UI专家; 测试员1; 程序员1; 程序员2; 程序员3; 设计专家; 项目经理; 需求专家; 质量专家 |
| 72 | 沟通 | resources 王旭; 李嘉铭; 郑文涛; 娄政浩; 刘永泰; 刘博文 → aa; UI专家; 测试员1; 程序员1; 程序员2; 程序员3; 设计专家; 项目经理; 需求专家; 质量专家 |
| 73 | 采购 | resources 刘博文 → 项目经理 |
| 74 | 项目验收 | resources 王旭; 李嘉铭; 郑文涛; 娄政浩; 刘永泰; 刘博文 → aa; UI专家; 测试员1; 程序员1; 程序员2; 程序员3; 设计专家; 项目经理; 需求专家; 质量专家 |
| 76 | 项目终验 | resources 王旭; 李嘉铭; 郑文涛; 娄政浩; 刘永泰; 刘博文 → aa; UI专家; 程序员1; 程序员2; 程序员3; 设计专家; 项目经理; 需求专家 |
